# GranttChart

Schedule from MS Project, 2015-10-02 to 2016-01-15, costs in ₫.
Quản Lý Dự Án
UIT

## Calendars

- Standard: Mon-Fri 08:00-12:00, 13:00-17:00; Sat-Sun off.

## Resources

| Resource | Rate |
| --- | --- |
| Nguyễn Văn Cảnh | 80000 |
| Hồ Thị Thanh Thảo | 100000 |
| Phan Y Biển | 80000 |
| Vũ Thành Nhân | 80000 |
| Giấy A4 | 20000 |
| Microsoft Project |  |
| Microsoft Office |  |
| Microsoft Visio |  |
| Microsoft Visual Studio |  |
| Git Hub |  |
| Skype |  |

## Schedule

| ID | WBS | Task | Type | Duration | Start | Finish | Predecessors | Total slack | Constraint | Resources | Work | Cost |
| --- | --- | --- | --- | --- | --- | --- | --- | --- | --- | --- | --- | --- |
| 1 | 1 | **Họp định kỳ hàng tuần** |  | 65.12d | 2015-10-02 | 2016-01-01 |  | 0d |  |  | 38h | 3,240,000 |
| 2 | 1.1 | Họp định kỳ hàng tuần 2 | manual | 1h | 2015-10-02 | 2015-10-02 |  |  | start no earlier than 2015-10-02 | Hồ Thị Thanh Thảo; Nguyễn Văn Cảnh; Phan Y Biển; Vũ Thành Nhân; Microsoft Office | 4h | 340,000 |
| 3 | 1.2 | Họp định kỳ hàng tuần 3 | manual | 1h | 2015-10-09 | 2015-10-09 |  |  | start no earlier than 2015-10-09 | Hồ Thị Thanh Thảo; Nguyễn Văn Cảnh; Phan Y Biển; Vũ Thành Nhân; Microsoft Office | 4h | 340,000 |
| 4 | 1.3 | Họp định kỳ hàng tuần 4 | manual | 1h | 2015-10-16 | 2015-10-16 |  |  | start no earlier than 2015-10-16 | Hồ Thị Thanh Thảo; Nguyễn Văn Cảnh; Phan Y Biển; Vũ Thành Nhân; Microsoft Office | 4h | 340,000 |
| 5 | 1.4 | Họp định kỳ hàng tuần 5 | manual | 1h | 2015-10-23 | 2015-10-23 |  |  | start no earlier than 2015-10-23 | Hồ Thị Thanh Thảo; Nguyễn Văn Cảnh; Phan Y Biển; Vũ Thành Nhân; Microsoft Office | 4h | 340,000 |
| 6 | 1.5 | Họp định kỳ hàng tuần 7 | manual | 1h | 2015-11-06 | 2015-11-06 |  |  | start no earlier than 2015-11-06 | Hồ Thị Thanh Thảo; Nguyễn Văn Cảnh; Phan Y Biển; Vũ Thành Nhân | 4h | 340,000 |
| 7 | 1.6 | Họp định kỳ hàng tuần 11 | manual | 1h | 2015-12-04 | 2015-12-04 |  |  | start no earlier than 2015-12-04 | Hồ Thị Thanh Thảo; Microsoft Office; Nguyễn Văn Cảnh; Phan Y Biển; Vũ Thành Nhân | 4h | 340,000 |
| 8 | 1.7 | Họp định kỳ hàng tuần 12 | manual | 1h | 2015-12-11 | 2015-12-11 |  |  | start no earlier than 2015-12-11 | Hồ Thị Thanh Thảo; Microsoft Office; Nguyễn Văn Cảnh; Phan Y Biển; Vũ Thành Nhân | 4h | 340,000 |
| 9 | 1.8 | Họp định kỳ hàng tuần 13 | manual | 1h | 2015-12-18 | 2015-12-18 |  |  | start no earlier than 2015-12-18 | Hồ Thị Thanh Thảo; Microsoft Office; Nguyễn Văn Cảnh; Phan Y Biển; Vũ Thành Nhân | 4h | 340,000 |
| 10 | 1.9 | Họp định kỳ hàng tuần 14 | manual | 1h | 2015-12-25 | 2015-12-25 |  |  | start no earlier than 2015-12-25 | Hồ Thị Thanh Thảo; Microsoft Office; Nguyễn Văn Cảnh; Phan Y Biển | 3h | 260,000 |
| 11 | 1.10 | Họp định kỳ hàng tuần 15 | manual | 1h | 2016-01-01 | 2016-01-01 |  |  | start no earlier than 2016-01-01 | Hồ Thị Thanh Thảo; Microsoft Office; Nguyễn Văn Cảnh; Phan Y Biển | 3h | 260,000 |
| 12 | 2 | **Phân tích** |  | 32d | 2015-10-19 | 2015-12-01 |  | 0d |  |  | 1920h | 163,100,000 |
| 13 | 2.1 | **Khảo sát hiện trạng** |  | 3d | 2015-10-19 | 2015-10-21 |  | 0d |  |  | 96h | 8,160,000 |
| 14 | 2.1.1 | Gặp khách hàng lấy yêu cầu dự án | manual | 2d | 2015-10-19 | 2015-10-20 |  |  |  | Hồ Thị Thanh Thảo; Nguyễn Văn Cảnh; Phan Y Biển; Vũ Thành Nhân; Microsoft Office; Skype | 64h | 5,440,000 |
| 15 | 2.1.2 | Mô tả hệ thống hiện tại - Nhận xét | manual | 1d | 2015-10-21 | 2015-10-21 | 14 |  |  | Hồ Thị Thanh Thảo; Microsoft Office; Nguyễn Văn Cảnh; Phan Y Biển; Vũ Thành Nhân; Skype | 32h | 2,720,000 |
| 16 | 2.2 | **Phát biểu bài toán** |  | 4d | 2015-10-21 | 2015-10-26 | 13 | 0d |  |  | 160h | 13,440,000 |
| 17 | 2.2.1 | Quản lý nhân viên | manual | 4d | 2015-10-21 | 2015-10-26 |  |  |  | Vũ Thành Nhân; Microsoft Office | 32h | 2,560,000 |
| 18 | 2.2.2 | Quản lý khách hàng | manual | 4d | 2015-10-21 | 2015-10-26 |  |  |  | Vũ Thành Nhân; Microsoft Office | 32h | 2,560,000 |
| 19 | 2.2.3 | Quản lý bán hàng | manual | 4d | 2015-10-21 | 2015-10-26 |  |  |  | Hồ Thị Thanh Thảo; Microsoft Office | 32h | 3,200,000 |
| 20 | 2.2.4 | Quản lý kho | manual | 4d | 2015-10-21 | 2015-10-26 |  |  |  | Phan Y Biển; Microsoft Office | 32h | 2,560,000 |
| 21 | 2.2.5 | Quản lý bảo hành | manual | 4d | 2015-10-21 | 2015-10-26 |  |  |  | Nguyễn Văn Cảnh; Microsoft Office | 32h | 2,560,000 |
| 22 | 2.3 | **Đặc tả tài liệu hệ thống** |  | 26d | 2015-10-27 | 2015-12-01 | 16 | 0d |  |  | 1664h | 141,500,000 |
| 23 | 2.3.1 | **Tài liệu phân tích use-case** |  | 4d | 2015-10-27 | 2015-10-30 |  | 0d |  |  | 128h | 10,880,000 |
| 24 | 2.3.1.1 | Danh sách use-case của hệ thống | manual | 1d | 2015-10-27 | 2015-10-27 |  |  |  | Hồ Thị Thanh Thảo; Microsoft Visio; Nguyễn Văn Cảnh; Phan Y Biển; Vũ Thành Nhân | 32h | 2,720,000 |
| 25 | 2.3.1.2 | Vẽ use-case diagram | manual | 1d | 2015-10-28 | 2015-10-28 | 24 |  |  | Hồ Thị Thanh Thảo; Microsoft Visio; Nguyễn Văn Cảnh; Phan Y Biển; Vũ Thành Nhân | 32h | 2,720,000 |
| 26 | 2.3.1.3 | Mô tả use-case | manual | 2d | 2015-10-29 | 2015-10-30 | 25 |  |  | Hồ Thị Thanh Thảo; Microsoft Visio; Nguyễn Văn Cảnh; Phan Y Biển; Vũ Thành Nhân | 64h | 5,440,000 |

| ID | WBS | Task | Type | Duration | Start | Finish | Predecessors | Total slack | Free slack | Resources | Work | Cost |
| --- | --- | --- | --- | --- | --- | --- | --- | --- | --- | --- | --- | --- |
| 27 | 2.3.2 | **Tài liệu phân tích sequence diagram** |  | 6d | 2015-10-30 | 2015-11-06 | 23 | 0d |  |  | 192h | 16,340,000 |
| 28 | 2.3.2.1 | Phác thảo giao diện use-case | manual | 3d | 2015-10-30 | 2015-11-03 |  |  |  | Giấy A4; Hồ Thị Thanh Thảo; Microsoft Visio; Nguyễn Văn Cảnh; Phan Y Biển; Vũ Thành Nhân | 96h | 8,180,000 |
| 29 | 2.3.2.2 | Vẽ seuqence diagram | manual | 3d | 2015-11-04 | 2015-11-06 | 28 |  |  | Hồ Thị Thanh Thảo; Microsoft Visio; Nguyễn Văn Cảnh; Phan Y Biển; Vũ Thành Nhân | 96h | 8,160,000 |
| 30 | 2.3.3 | **Tài liệu phân tích activity diagram** |  | 7d | 2015-11-07 | 2015-11-17 | 23 | 0d |  |  | 256h | 21,780,000 |
| 31 | 2.3.3.1 | Vẽ acticity diagram | manual | 4d | 2015-11-07 | 2015-11-11 |  |  |  | Giấy A4; Hồ Thị Thanh Thảo; Microsoft Visio; Nguyễn Văn Cảnh; Phan Y Biển; Vũ Thành Nhân | 128h | 10,900,000 |
| 32 | 2.3.3.2 | Mô tả activity diagram | manual | 4d | 2015-11-12 | 2015-11-17 | 31 |  |  | Hồ Thị Thanh Thảo; Microsoft Office; Nguyễn Văn Cảnh; Phan Y Biển; Vũ Thành Nhân | 128h | 10,880,000 |
| 33 | 2.3.4 | **Tài liệu phân tích class diagram** |  | 8d | 2015-11-12 | 2015-11-23 | 23, 30, 27 | 0d |  |  | 256h | 21,780,000 |
| 34 | 2.3.4.1 | Vẽ class diagram | manual | 4d | 2015-11-12 | 2015-11-17 |  |  |  | Giấy A4; Hồ Thị Thanh Thảo; Microsoft Visio; Nguyễn Văn Cảnh; Phan Y Biển; Vũ Thành Nhân | 128h | 10,900,000 |
| 35 | 2.3.4.2 | Mô tả class diagram | manual | 4d | 2015-11-18 | 2015-11-23 | 34 |  |  | Hồ Thị Thanh Thảo; Microsoft Office; Nguyễn Văn Cảnh; Phan Y Biển; Vũ Thành Nhân | 128h | 10,880,000 |
| 36 | 2.3.5 | Tài liệu Q&A | manual | 26d | 2015-10-27 | 2015-12-01 | 15, 16 |  |  | Hồ Thị Thanh Thảo; Microsoft Office; Nguyễn Văn Cảnh; Phan Y Biển; Vũ Thành Nhân | 832h | 70,720,000 |
| 37 | 3 | **Thiết kế** |  | 18d | 2015-11-19 | 2015-12-14 | 12 | -1d | 0d |  | 528h | 44,600,000 |
| 38 | 3.1 | **Thiết kế database** |  | 5d | 2015-11-19 | 2015-11-25 |  | 0d |  |  | 160h | 13,620,000 |
| 39 | 3.1.1 | Vẽ database diagram | manual | 3d | 2015-11-19 | 2015-11-23 |  |  |  | Giấy A4; Hồ Thị Thanh Thảo; Microsoft Visual Studio; Nguyễn Văn Cảnh; Phan Y Biển; Vũ Thành Nhân | 96h | 8,180,000 |
| 40 | 3.1.2 | Mô tả database diagram | manual | 2d | 2015-11-24 | 2015-11-25 | 39 |  |  | Hồ Thị Thanh Thảo; Microsoft Office; Nguyễn Văn Cảnh; Phan Y Biển; Vũ Thành Nhân | 64h | 5,440,000 |
| 41 | 3.2 | **Thiết kế giao diện** |  | 14d | 2015-11-25 | 2015-12-14 |  | -1d | 0d |  | 368h | 30,980,000 |
| 42 | 3.2.1 | Thiết kế giao diện chính | manual | 1d | 2015-11-25 | 2015-11-25 |  |  |  | Microsoft Visual Studio; Phan Y Biển | 8h | 640,000 |
| 43 | 3.2.2 | **Thiết kế giao diện theo use-case** |  | 10d | 2015-12-01 | 2015-12-14 | 42 | -3d | 0d |  | 360h | 30,340,000 |
| 44 | 3.2.2.1 | Giao diện quản lý nhân viên | manual | 9d | 2015-12-01 | 2015-12-11 |  |  |  | Giấy A4; Microsoft Visio; Vũ Thành Nhân | 72h | 5,780,000 |
| 45 | 3.2.2.2 | Quản lý khách hàng | manual | 9d | 2015-12-01 | 2015-12-11 |  |  |  | Giấy A4; Microsoft Visio; Vũ Thành Nhân | 72h | 5,780,000 |
| 46 | 3.2.2.3 | Quản lý bán hàng | manual | 9d | 2015-12-01 | 2015-12-11 |  |  |  | Giấy A4; Hồ Thị Thanh Thảo; Microsoft Visio | 72h | 7,220,000 |
| 47 | 3.2.2.4 | Quản lý kho |  | 9d | 2015-12-02 | 2015-12-14 |  | -4d | 0d | Giấy A4; Microsoft Visio; Phan Y Biển | 72h | 5,780,000 |
| 48 | 3.2.2.5 | Quản lý bảo hành | manual | 9d | 2015-12-01 | 2015-12-11 |  |  |  | Giấy A4; Microsoft Visio; Nguyễn Văn Cảnh | 72h | 5,780,000 |
| 49 | 4 | **Cài đặt** |  | 28d | 2015-12-09 | 2016-01-15 | 37 | 0d |  |  | 1008h | 85,120,000 |
| 50 | 4.1 | **Coding theo chức năng** |  | 14d | 2015-12-09 | 2015-12-28 |  | 0d |  |  | 560h | 47,040,000 |
| 51 | 4.1.1 | **Chức năng quản lý nhân viên** |  | 13d | 2015-12-09 | 2015-12-25 |  | 0d |  |  | 112h | 8,960,000 |
| 52 | 4.1.1.1 | Chức năng login | manual | 3d | 2015-12-09 | 2015-12-11 |  |  |  | Microsoft Visual Studio; Vũ Thành Nhân | 24h | 1,920,000 |
| 53 | 4.1.1.2 | Thêm xóa sửa nhân viên | manual | 7d | 2015-12-12 | 2015-12-21 |  |  |  | Microsoft Visual Studio; Vũ Thành Nhân | 56h | 4,480,000 |
| 54 | 4.1.1.3 | Quản lý quy định | manual | 4d | 2015-12-22 | 2015-12-25 |  |  |  | Microsoft Visual Studio; Vũ Thành Nhân | 32h | 2,560,000 |
| 55 | 4.1.2 | Chức năng quản lý khách hàng | manual | 14d | 2015-12-09 | 2015-12-28 |  |  |  | Microsoft Visual Studio; Vũ Thành Nhân | 112h | 8,960,000 |

| ID | WBS | Task | Type | Duration | Start | Finish | Predecessors | Total slack | Resources | Work | Cost |
| --- | --- | --- | --- | --- | --- | --- | --- | --- | --- | --- | --- |
| 56 | 4.1.3 | **Chức năng quản lý bán hàng** |  | 13d | 2015-12-09 | 2015-12-25 |  | 0d |  | 112h | 11,200,000 |
| 57 | 4.1.3.1 | Thêm hóa đơn | manual | 3d | 2015-12-09 | 2015-12-11 |  |  | Hồ Thị Thanh Thảo | 24h | 2,400,000 |
| 58 | 4.1.3.2 | Tìm kiếm hóa đơn | manual | 4d | 2015-12-12 | 2015-12-16 |  |  | Hồ Thị Thanh Thảo | 32h | 3,200,000 |
| 59 | 4.1.3.3 | Xem nhật ký hóa đơn | manual | 3d | 2015-12-17 | 2015-12-21 |  |  | Hồ Thị Thanh Thảo | 24h | 2,400,000 |
| 60 | 4.1.3.4 | Báo cáo thống kê bán hàng | manual | 2d | 2015-12-22 | 2015-12-23 |  |  | Hồ Thị Thanh Thảo; Microsoft Visual Studio | 16h | 1,600,000 |
| 61 | 4.1.3.5 | Báo cáo doanh thu | manual | 2d | 2015-12-24 | 2015-12-25 |  |  | Hồ Thị Thanh Thảo | 16h | 1,600,000 |
| 62 | 4.1.4 | **Chức năng quản lý kho** |  | 14d | 2015-12-09 | 2015-12-28 |  | 0d |  | 112h | 8,960,000 |
| 63 | 4.1.4.1 | Thêm xóa sửa sản phẩm | manual | 5d | 2015-12-09 | 2015-12-15 |  |  | Phan Y Biển | 40h | 3,200,000 |
| 64 | 4.1.4.2 | Quản lý nhà cung cấp | manual | 5d | 2015-12-16 | 2015-12-22 |  |  | Phan Y Biển | 40h | 3,200,000 |
| 65 | 4.1.4.3 | Thống kê báo cáo kho | manual | 4d | 2015-12-23 | 2015-12-28 |  |  | Phan Y Biển | 32h | 2,560,000 |
| 66 | 4.1.5 | **Chức năng quản lý bảo hành** |  | 14d | 2015-12-09 | 2015-12-28 |  | 0d |  | 112h | 8,960,000 |
| 67 | 4.1.5.1 | Tiếp nhận phiếu bảo hành | manual | 5d | 2015-12-09 | 2015-12-15 |  |  | Nguyễn Văn Cảnh | 40h | 3,200,000 |
| 68 | 4.1.5.2 | Trả hàng bảo hành | manual | 5d | 2015-12-16 | 2015-12-22 |  |  | Nguyễn Văn Cảnh | 40h | 3,200,000 |
| 69 | 4.1.5.3 | Xuất linh kiện bảo hành | manual | 4d | 2015-12-23 | 2015-12-28 |  |  | Nguyễn Văn Cảnh | 32h | 2,560,000 |
| 70 | 4.2 | Tạo Unit test | manual | 14d | 2015-12-29 | 2016-01-15 | 50 |  | Hồ Thị Thanh Thảo; Microsoft Office; Nguyễn Văn Cảnh; Phan Y Biển; Vũ Thành Nhân | 448h | 38,080,000 |
| 71 | 5 | **Kiểm thử** |  | 6d | 2015-12-28 | 2016-01-04 | 49 | 0d |  | 256h | 21,920,000 |
| 72 | 5.1 | Kiểm tra nghiệp vụ của hệ thống | manual | 4d | 2015-12-28 | 2015-12-31 |  |  | Hồ Thị Thanh Thảo; Nguyễn Văn Cảnh; Phan Y Biển | 96h | 8,320,000 |
| 73 | 5.2 | Kiểm tra các chức năng của hệ thống | manual | 3d | 2015-12-28 | 2015-12-30 |  |  | Hồ Thị Thanh Thảo; Nguyễn Văn Cảnh; Phan Y Biển; Vũ Thành Nhân | 96h | 8,160,000 |
| 74 | 5.3 | Kiểm tra hiệu suất của hệ thống | manual | 2d | 2016-01-01 | 2016-01-04 | 73, 72 |  | Hồ Thị Thanh Thảo; Nguyễn Văn Cảnh; Phan Y Biển; Vũ Thành Nhân | 64h | 5,440,000 |
| 75 | 6 | **Vận hành hệ thống** |  | 2d | 2016-01-01 | 2016-01-04 | 71 | 0d |  | 48h | 4,160,000 |
| 76 | 6.1 | Hoàn thành tài liệu hướng dẫn sử dụng | manual | 2d | 2016-01-01 | 2016-01-04 |  |  | Hồ Thị Thanh Thảo; Nguyễn Văn Cảnh | 32h | 2,880,000 |
| 77 | 6.2 | Tạo file setup | manual | 1d | 2016-01-04 | 2016-01-04 |  |  | Phan Y Biển; Vũ Thành Nhân | 16h | 1,280,000 |
